How a schedule from MS Project changed from version to version. A marks actual dates.

## Version 1 (saved 2017-08-17)

Note of the change: 调整

| ID | WBS | Task | Duration | Start | Finish | Predecessors | Complete | Total float |
| --- | --- | --- | --- | --- | --- | --- | --- | --- |
| 1 | 1 | **会员系统开发** | 13d | 2017-08-15 A | 2017-08-31 |  | 30% | 0d |
| 2 | 1.1 | **业务功能开发** | 13d | 2017-08-15 A | 2017-08-31 |  | 6% | 0d |
| 3 |  | 储值购买反结算 | 1d | 2017-08-15 A | 2017-08-15 A |  | 100% |  |
| 4 |  | 卡券购买反结算 | 1d | 2017-08-16 | 2017-08-16 | 3 |  |  |
| 5 |  | 卡包购买反结算 | 1d | 2017-08-17 | 2017-08-17 | 4 |  |  |
| 6 |  | 储值、卡券、卡包购买打印结算单 | 2d | 2017-08-17 | 2017-08-18 |  |  |  |
| 7 |  | 结算不开票 | 1d | 2017-08-18 | 2017-08-18 | 5 |  |  |
| 8 |  | 结算增加规则 | 3d | 2017-08-22 | 2017-08-24 | 7 |  |  |
| 9 |  | 储值、卡券、卡包 界面整合 | 5d | 2017-08-25 | 2017-08-31 | 8 |  |  |
| 10 |  | 客户微信端--储值明细改造 | 1d? | 2017-08-15 | 2017-08-15 |  |  |  |
| 11 |  | 界面调整 | 1d? | 2017-08-15 | 2017-08-15 |  |  |  |
| 12 |  | 客户微信端--积分明细改造 | 1d? | 2017-08-15 | 2017-08-15 |  |  |  |
| 13 |  | 卡券界面改造 | 1d? | 2017-08-15 | 2017-08-15 |  |  |  |
| 14 | 1.2 | **规则定时任务** | 1d | 2017-08-15 A | 2017-08-15 |  | 53% | 0d |
| 15 |  | 会员卡券过期更新 | 1d | 2017-08-15 A | 2017-08-15 A |  | 100% |  |
| 16 |  | 会员积分过期更新 | 1d | 2017-08-15 A | 2017-08-15 A |  | 100% |  |
| 17 |  | 会员储值过期更新 | 1d | 2017-08-15 A | 2017-08-15 A |  | 100% |  |
| 18 |  | 会员升级定时任务 | 1d | 2017-08-15 A | 2017-08-15 A |  | 100% |  |
| 19 |  | 会员降级定时任务 | 1d | 2017-08-15 A | 2017-08-15 A |  | 100% |  |
| 20 |  | 会员权益定时任务 | 1d | 2017-08-15 A | 2017-08-15 A |  | 100% |  |
| 21 |  | 会员卡券到期提醒 | 1d | 2017-08-15 A | 2017-08-15 A |  | 100% |  |
| 22 |  | 会员积分到期提醒 | 1d | 2017-08-15 A | 2017-08-15 A |  | 100% |  |
| 23 |  | 会员生日到期提醒 | 1d | 2017-08-15 A | 2017-08-15 A |  | 100% |  |
| 24 |  | 会员储值到期提醒 | 1d | 2017-08-15 A | 2017-08-15 A |  | 100% |  |
| 25 |  | 会员首保到期提醒 | 1d? | 2017-08-15 | 2017-08-15 |  |  |  |
| 26 |  | 会员保养到期提醒 | 1d? | 2017-08-15 | 2017-08-15 |  |  |  |
| 27 |  | 会员保险到期提醒 | 1d? | 2017-08-15 | 2017-08-15 |  |  |  |
| 28 |  | 驾照年审到期提醒 | 1d? | 2017-08-15 | 2017-08-15 |  |  |  |
| 29 |  | 车辆年检到期提醒 | 1d? | 2017-08-15 | 2017-08-15 |  |  |  |
| 30 |  | 会员卡券购买提醒 | 1d? | 2017-08-15 | 2017-08-15 |  |  |  |
| 31 |  | 会员储值提醒 | 1d? | 2017-08-15 | 2017-08-15 |  |  |  |
| 32 |  | 会员套餐购买提醒 | 1d? | 2017-08-15 | 2017-08-15 |  |  |  |
| 33 |  | 会员消费结账（问卷调查） | 1d? | 2017-08-15 | 2017-08-15 |  |  |  |
| 34 | 2 | **业务报表开发** | 1d | 2017-08-16 | 2017-08-16 |  |  | 0d |
| 35 | 2.1 | **运通汇系统客服业务报表-经销店** | 1d | 2017-08-16 | 2017-08-16 |  |  | 0d |
| 36 |  | 会员信息列表 | 1d? | 2017-08-16 | 2017-08-16 |  |  |  |
| 37 |  | 会员积分列表 | 1d? | 2017-08-16 | 2017-08-16 |  |  |  |
| 38 |  | 会员卡券列表 | 1d? | 2017-08-16 | 2017-08-16 |  |  |  |
| 39 |  | 会员储值列表 | 1d? | 2017-08-16 | 2017-08-16 |  |  |  |
| 40 | 3 | **云之家轻应用开发** | 5d | 2017-08-07 A | 2017-08-11 |  | 38% | 0d |
| 41 |  | 投诉建议应用开发 | 5d | 2017-08-07 A | 2017-08-11 A |  | 100% |  |
| 42 | 3.2 | **开票信息应用开发** | 1d | 2017-08-07 | 2017-08-07 |  |  | 0d |
| 43 |  | 接口开发 | 1d? | 2017-08-07 | 2017-08-07 |  |  |  |
| 44 |  | 界面开发 | 1d? | 2017-08-07 | 2017-08-07 |  |  |  |
| 45 |  | 界面接口调试 | 1d? | 2017-08-07 | 2017-08-07 |  |  |  |
| 46 |  | 测试上线 | 1d? | 2017-08-07 | 2017-08-07 |  |  |  |
| 47 | 3.3 | **电子名片应用开发** | 1d | 2017-08-07 | 2017-08-07 |  |  | 0d |
| 48 |  | 接口开发 | 1d? | 2017-08-07 | 2017-08-07 |  |  |  |
| 49 |  | 界面开发 | 1d? | 2017-08-07 | 2017-08-07 |  |  |  |
| 50 |  | 界面接口调试 | 1d? | 2017-08-07 | 2017-08-07 |  |  |  |
| 51 |  | 测试上线 | 1d? | 2017-08-07 | 2017-08-07 |  |  |  |
| 52 | 4 | **bug修改** | 1d | 2017-08-16 | 2017-08-16 |  |  | 0d |
| 53 |  | 温州欣奥会员导入 | 1d | 2017-08-16 | 2017-08-16 |  |  |  |
| 54 |  | 重庆汇捷无限卡券显示为单次问题 | 1d | 2017-08-16 | 2017-08-16 |  |  |  |
| 55 |  | 北京兴奥无法结算问题 | 1d | 2017-08-16 | 2017-08-16 |  |  |  |
| 56 | 5 | **高可用系统框架** | 1d | 2017-08-16 | 2017-08-16 |  |  | 0d |
| 57 | 5.1 | **方案整理** | 1d | 2017-08-16 | 2017-08-16 |  |  | 0d |
| 58 |  | 方案制定 | 1d? | 2017-08-16 | 2017-08-16 |  |  |  |
| 59 |  | 方案讨论 | 1d? | 2017-08-16 | 2017-08-16 |  |  |  |
| 60 |  | 方案确认 | 1d? | 2017-08-16 | 2017-08-16 |  |  |  |
| 61 |  | 方案实施 | 1d? | 2017-08-16 | 2017-08-16 |  |  |  |
| 62 | 6 | **财务系统开票明细** | 1d | 2017-08-16 | 2017-08-16 |  |  | 0d |
| 63 |  | DSM数据对接调研 | 1d | 2017-08-16 | 2017-08-16 |  |  |  |

## Version 2 (saved 2017-08-18)

Note of the change: 调整

Last finish stays 2017-08-31.

Added:

| ID | Task | Duration | Start | Finish | Resources |
| --- | --- | --- | --- | --- | --- |
| 9 | 结算完后会员升级(生成会员级别调整记录) | 2d | 2017-08-22 | 2017-08-23 | 陈小桂 |
| 10 | 根据会员规则结算 | 1d | 2017-08-24 | 2017-08-24 | 陈小桂 |
| 11 | **购买规则处理** | 1d | 2017-08-15 | 2017-08-15 |  |
| 12 | 储值完后会员升级(生成会员级别调整记录) | 1d | 2017-08-15 | 2017-08-15 | 陈小桂 |
| 31 | 驾照年审到期提醒 | 1d | 2017-08-22 | 2017-08-22 | 王大鹏 |

Removed: 11 界面调整

Changed:

| ID | Task | Start | Finish | Duration | Complete | Other |
| --- | --- | --- | --- | --- | --- | --- |
| 1 | **会员系统开发** |  |  |  | 30% → 28% |  |
| 2 | **业务功能开发** |  |  |  | 6% → 5% |  |
| 14 | 客户微信端--储值明细改造 | 2017-08-15 → 2017-08-23 (+8d) | 2017-08-15 → 2017-08-23 (+8d) | 1d? → 1d |  | resources none → 郭婷; 张籽娟 |
| 15 | 客户微信端--积分明细改造 | 2017-08-15 → 2017-08-24 (+9d) | 2017-08-15 → 2017-08-24 (+9d) | 1d? → 1d |  | resources none → 郭婷; 张籽娟 |
| 16 | 卡券界面改造 | 2017-08-15 → 2017-08-23 (+8d) | 2017-08-15 → 2017-08-24 (+9d) | 1d? → 2d |  | resources none → 郭婷; 李凯 |
| 17 | **规则定时任务** |  | 2017-08-15 → 2017-08-25 (+10d) | 1d → 9d | 53% → 48% |  |
| 28 | 会员首保到期提醒 | 2017-08-15 → 2017-08-21 (+6d) | 2017-08-15 → 2017-08-21 (+6d) | 1d? → 1d |  | resources none → 王大鹏 |
| 29 | 会员保养到期提醒 | 2017-08-15 → 2017-08-21 (+6d) | 2017-08-15 → 2017-08-21 (+6d) | 1d? → 1d |  | resources none → 王大鹏 |
| 30 | 会员保险到期提醒 | 2017-08-15 → 2017-08-21 (+6d) | 2017-08-15 → 2017-08-21 (+6d) | 1d? → 1d |  | resources none → 王大鹏 |
| 32 | 驾照年审到期提醒 | 2017-08-15 → 2017-08-22 (+7d) | 2017-08-15 → 2017-08-22 (+7d) | 1d? → 1d |  | resources none → 王大鹏 |
| 33 | 车辆年检到期提醒 | 2017-08-15 → 2017-08-22 (+7d) | 2017-08-15 → 2017-08-22 (+7d) | 1d? → 1d |  | resources none → 王大鹏 |
| 34 | 会员卡券购买提醒 | 2017-08-15 → 2017-08-22 (+7d) | 2017-08-15 → 2017-08-22 (+7d) | 1d? → 1d |  | resources none → 王大鹏 |
| 35 | 会员储值提醒 | 2017-08-15 → 2017-08-22 (+7d) | 2017-08-15 → 2017-08-23 (+8d) | 1d? → 2d |  | resources none → 王大鹏 |
| 36 | 会员套餐购买提醒 | 2017-08-15 → 2017-08-24 (+9d) | 2017-08-15 → 2017-08-24 (+9d) | 1d? → 1d |  | resources none → 王大鹏 |
| 37 | 会员消费结账（问卷调查） | 2017-08-15 → 2017-08-25 (+10d) | 2017-08-15 → 2017-08-25 (+10d) | 1d? → 1d |  | resources none → 王大鹏 |
| 44 | **云之家轻应用开发** |  | 2017-08-11 → 2017-08-29 (+18d) | 5d → 17d | 38% → 31% |  |
| 46 | **开票信息应用开发** | 2017-08-07 → 2017-08-16 (+9d) | 2017-08-07 → 2017-08-23 (+16d) | 1d → 6d |  | resources none → 李凯 |
| 47 | 接口开发 | 2017-08-07 → 2017-08-16 (+9d) | 2017-08-07 → 2017-08-17 (+10d) | 1d? → 2d |  | resources none → 李凯 |
| 48 | 界面开发 | 2017-08-07 → 2017-08-18 (+11d) | 2017-08-07 → 2017-08-21 (+14d) | 1d? → 2d |  | resources none → 李凯; 郭婷 |
| 49 | 界面接口调试 | 2017-08-07 → 2017-08-22 (+15d) | 2017-08-07 → 2017-08-22 (+15d) | 1d? → 1d |  | resources none → 李凯; 郭婷 |
| 50 | 测试上线 | 2017-08-07 → 2017-08-23 (+16d) | 2017-08-07 → 2017-08-23 (+16d) | 1d? → 1d |  | resources none → 文栎波 |
| 51 | **电子名片应用开发** | 2017-08-07 → 2017-08-15 (+8d) | 2017-08-07 → 2017-08-29 (+22d) | 1d → 11d |  |  |
| 52 | 接口开发 | 2017-08-07 → 2017-08-15 (+8d) | 2017-08-07 → 2017-08-16 (+9d) | 1d? → 2d |  | resources none → 李凯 |
| 53 | 界面开发 | 2017-08-07 → 2017-08-25 (+18d) | 2017-08-07 → 2017-08-25 (+18d) | 1d? → 1d |  | resources none → 郭婷 |
| 54 | 界面接口调试 | 2017-08-07 → 2017-08-28 (+21d) | 2017-08-07 → 2017-08-28 (+21d) | 1d? → 1d |  | resources none → 郭婷; 李凯 |
| 55 | 测试上线 | 2017-08-07 → 2017-08-29 (+22d) | 2017-08-07 → 2017-08-29 (+22d) | 1d? → 1d |  | resources none → 文栎波 |
| 56 | **bug修改** | 2017-08-16 → 2017-08-15 (-1d) | 2017-08-16 → 2017-08-21 (+5d) | 1d → 5d |  |  |
| 57 | 温州欣奥会员导入 | 2017-08-16 → 2017-08-15 (-1d) | 2017-08-16 → 2017-08-15 (-1d) |  |  |  |
| 58 | 重庆汇捷无限卡券显示为单次问题 | 2017-08-16 → 2017-08-21 (+5d) | 2017-08-16 → 2017-08-21 (+5d) |  |  |  |
| 59 | 北京兴奥无法结算问题 | 2017-08-16 → 2017-08-21 (+5d) | 2017-08-16 → 2017-08-21 (+5d) |  |  |  |
| 60 | **高可用系统框架** | 2017-08-16 → 2017-08-14 (-2d) | 2017-08-16 → 2017-08-23 (+7d) | 1d → 8d |  |  |
| 61 | **方案整理** | 2017-08-16 → 2017-08-14 (-2d) | 2017-08-16 → 2017-08-23 (+7d) | 1d → 8d |  |  |
| 62 | 方案制定 | 2017-08-16 → 2017-08-14 (-2d) |  | 1d? → 3d |  | resources none → 王大鹏 |
| 63 | 方案讨论 | 2017-08-16 → 2017-08-21 (+5d) | 2017-08-16 → 2017-08-21 (+5d) | 1d? → 1d |  | resources none → 陈小桂; 付陈林; 梁廷森; 王大鹏 |
| 64 | 方案确认 | 2017-08-16 → 2017-08-23 (+7d) | 2017-08-16 → 2017-08-23 (+7d) | 1d? → 1d |  | resources none → 付陈林; 王大鹏 |
| 65 | 方案实施 | 2017-08-16 → 2017-08-14 (-2d) | 2017-08-16 → 2017-08-14 (-2d) |  |  |  |

## Version 3 (saved 2017-08-23)

Note of the change: 调整

Last finish 2017-08-31 → 2017-09-01 (+1d). Complete tasks 12 → 23.

Added:

| ID | Task | Duration | Start | Finish | Resources |
| --- | --- | --- | --- | --- | --- |
| 17 | 后台添加临时会员 | 1d | 2017-08-15 | 2017-08-15 | 梁廷森 |
| 18 | 全员开通会员 | 1d? | 2017-08-15 | 2017-08-15 |  |
| 37 | **商周数据导入** | 1d | 2017-08-16 A | 2017-08-16 |  |
| 38 | 北京博恩商周数据导入 | 1d | 2017-08-16 A | 2017-08-16 A | 梁廷森 |
| 39 | 陕西瑞迪商周数据初始化导出 | 0.5d | 2017-08-16 | 2017-08-16 | 梁廷森 |
| 40 | 陕西博宝商周数据初始化导出 | 0.5d | 2017-08-16 | 2017-08-16 | 梁廷森 |
| 41 | 陕西瑞捷商周数据初始化导出 | 0.5d | 2017-08-16 | 2017-08-16 | 梁廷森 |
| 42 | 陕西瑞迪商周数据核实导入 | 0.5d | 2017-08-16 | 2017-08-16 | 梁廷森 |
| 43 | 陕西博宝商周数据核实导入 | 0.5d | 2017-08-16 | 2017-08-16 | 梁廷森 |
| 44 | 陕西瑞捷商周数据核实导入 | 0.5d | 2017-08-16 | 2017-08-16 | 梁廷森 |
| 63 | 审批消息列表展示 | 1d? | 2017-08-07 | 2017-08-07 |  |
| 64 | 云之家审批代办消息提醒 | 1d? | 2017-08-07 | 2017-08-07 |  |
| 77 | 微信商城开发 | 1d? | 2017-08-16 | 2017-08-16 |  |

Removed: 32 驾照年审到期提醒; 35 会员储值提醒; 36 会员套餐购买提醒

Changed:

| ID | Task | Start | Finish | Duration | Complete | Total float | Other |
| --- | --- | --- | --- | --- | --- | --- | --- |
| 1 | **会员系统开发** |  | 2017-08-31 → 2017-09-01 (+1d) | 13d → 14d | 28% → 43% |  |  |
| 2 | **业务功能开发** |  |  |  | 5% → 33% |  |  |
| 3 | 储值购买反结算 |  |  |  |  |  | resources 陈小桂 → 陈小桂; 李凯 |
| 4 | 卡券购买反结算 | 2017-08-16 A | 2017-08-16 A |  | 0% → 100% |  |  |
| 5 | 卡包购买反结算 | 2017-08-17 A | 2017-08-17 A |  | 0% → 100% |  |  |
| 6 | 储值、卡券、卡包购买打印结算单 | 2017-08-17 A | 2017-08-18 A |  | 0% → 100% |  |  |
| 7 | 结算不开票 | 2017-08-18 A | 2017-08-18 A |  | 0% → 100% |  |  |
| 8 | **结算增加规则** | 2017-08-22 A |  |  | 0% → 33% |  |  |
| 9 | 结算完后会员升级(生成会员级别调整记录) | 2017-08-22 A |  |  | 0% → 50% |  |  |
| 11 | **购买规则处理** | 2017-08-15 → 2017-08-24 (+9d) | 2017-08-15 → 2017-08-24 (+9d) |  |  |  |  |
| 12 | 储值完后会员升级(生成会员级别调整记录) | 2017-08-15 → 2017-08-24 (+9d) | 2017-08-15 → 2017-08-24 (+9d) |  |  |  |  |
| 19 | **规则定时任务** |  | 2017-08-25 → 2017-09-01 (+7d) | 9d → 14d | 48% → 53% |  |  |
| 35 | 会员购买提醒 | 2017-08-22 → 2017-08-29 (+7d) | 2017-08-22 → 2017-08-30 (+8d) | 1d → 2d |  |  | was named 会员卡券购买提醒; resources 王大鹏 → 王大鹏; 陈小桂 |
| 36 | 会员消费结账（问卷调查） | 2017-08-25 → 2017-08-31 (+6d) | 2017-08-25 → 2017-09-01 (+7d) | 1d → 2d |  |  | resources 王大鹏 → 王大鹏; 陈小桂 |
| 51 | **云之家轻应用开发** |  |  |  | 31% → 50% |  |  |
| 53 | **开票信息应用开发** | 2017-08-16 A |  |  | 0% → 67% |  |  |
| 54 | 接口开发 | 2017-08-16 A | 2017-08-17 A |  | 0% → 100% |  |  |
| 55 | 界面开发 | 2017-08-18 A | 2017-08-21 A |  | 0% → 100% |  |  |
| 65 | **bug修改** | 2017-08-15 A | 2017-08-21 A |  | 0% → 100% | 0d → none |  |
| 66 | 温州欣奥会员导入 | 2017-08-15 A | 2017-08-15 A |  | 0% → 100% |  |  |
| 67 | 重庆汇捷无限卡券显示为单次问题 | 2017-08-21 A | 2017-08-21 A |  | 0% → 100% |  |  |
| 68 | 北京兴奥无法结算问题 | 2017-08-21 A | 2017-08-21 A |  | 0% → 100% |  |  |
| 69 | **高可用系统框架** | 2017-08-14 A |  |  | 0% → 50% |  |  |
| 70 | **方案整理** | 2017-08-14 A |  |  | 0% → 60% |  |  |
| 71 | 方案制定 | 2017-08-14 A | 2017-08-16 A |  | 0% → 100% |  |  |
| 72 | 方案讨论 |  |  |  |  |  | resources 陈小桂; 付陈林; 梁廷森; 王大鹏 → 付陈林; 王大鹏 |

## Version 4 (saved 2017-09-05)

Note of the change: 调整部门信息

Last finish 2017-09-01 → 2017-10-04 (+33d). Complete tasks 23 → 46.

Added:

| ID | Task | Duration | Start | Finish | Predecessors | Constraint | Resources |
| --- | --- | --- | --- | --- | --- | --- | --- |
| 11 | 结算时增加积分累计规则 | 1d | 2017-08-24 A | 2017-08-24 A |  |  | 陈小桂 |
| 12 | 结算时增加积分抵现规则 | 1d | 2017-08-25 A | 2017-08-25 A |  |  | 陈小桂 |
| 13 | 结算时增加优惠折扣策略 | 1d | 2017-08-25 A | 2017-08-25 A |  |  | 陈小桂 |
| 21 | 服务类型、费用类型可多选处理 | 2d | 2017-09-04 | 2017-09-05 |  |  | 陈小桂 |
| 22 | 新增活动方案(基础数据) | 0.5d | 2017-09-05 | 2017-09-05 |  |  | 张籽娟 |
| 23 | 卡券设置调整 | 0.5d | 2017-09-05 | 2017-09-05 |  |  | 张籽娟 |
| 24 | 会员储值设置调整 | 0.5d | 2017-09-06 | 2017-09-06 |  |  | 张籽娟 |
| 25 | 会员套餐设置调整 | 0.5d | 2017-09-06 | 2017-09-06 |  |  | 张籽娟 |
| 26 | 新增会员及临时会员的时候增加车主姓名及手机号字段 | 0.5d | 2017-09-07 | 2017-09-07 |  |  | 梁廷森 |
| 27 | 增加是否同时消费处理 | 1d | 2017-09-06 | 2017-09-06 |  |  | 陈小桂 |
| 28 | 卡券购买时---增加积分抵扣功能 | 1d | 2017-09-07 | 2017-09-07 |  |  | 陈小桂 |
| 29 | 会员模块字段增加 | 1d | 2017-09-05 | 2017-09-05 |  |  | 梁廷森 |
| 30 | 会员业务新增调整 | 1d | 2017-09-06 | 2017-09-06 |  |  | 梁廷森 |
| 31 | 会员业务查看调整 | 0.5d | 2017-09-07 | 2017-09-07 |  |  | 张籽娟 |
| 32 | 卡券销售记录调整 | 0.5d | 2017-09-08 | 2017-09-08 |  |  | 张籽娟 |
| 33 | 卡券发放记录调整 | 0.5d | 2017-09-08 | 2017-09-08 |  |  | 张籽娟 |
| 34 | 卡券使用记录调整 | 0.5d | 2017-09-11 | 2017-09-11 |  |  | 张籽娟 |
| 35 | 卡包销售记录调整 | 0.5d | 2017-09-11 | 2017-09-11 |  |  | 张籽娟 |
| 36 | 会员储值记录调整 | 0.5d | 2017-09-06 | 2017-09-06 |  |  | 李凯 |
| 37 | 会员购买记录调整 | 0.5d | 2017-09-06 | 2017-09-06 |  |  | 李凯 |
| 38 | 会员储值记录调整 | 0.5d | 2017-09-07 | 2017-09-07 |  |  | 李凯 |
| 39 | 会员消费记录调整 | 0.5d | 2017-09-07 | 2017-09-07 |  |  | 李凯 |
| 40 | 会员扫码记录调整 | 0.5d | 2017-09-08 | 2017-09-08 |  |  | 李凯 |
| 41 | 卡券PC端扫码记录调整 | 0.5d | 2017-09-08 | 2017-09-08 |  |  | 李凯 |
| 42 | 会员冻结记录调整 | 0.5d | 2017-09-11 | 2017-09-11 |  |  | 李凯 |
| 61 | 自定义天数提醒 | 2d | 2017-09-05 | 2017-09-06 |  |  | 王大鹏 |
| 86 | 增加用户新增功能 | 1d | 2017-09-04 | 2017-09-04 |  |  | 郭婷; 李凯 |
| 87 | 增加审批处理 | 1d | 2017-09-05 | 2017-09-05 |  |  | 李凯 |
| 95 | 服务类型关闭 | 1d | 2017-08-30 | 2017-08-30 |  |  | 张籽娟 |
| 96 | 条件参数，本次实付工时费,本次实付材料费、本次实付金额 | 1d | 2017-08-29 | 2017-08-29 |  |  | 梁廷森 |
| 97 | 积分调整类型， 增加一个调整金额。 | 1d | 2017-08-29 | 2017-08-29 |  |  | 李凯 |
| 98 | 积分抵现规则，修改名称 积分单次最高使用比例、积分抵现比例 | 1d | 2017-08-28 A | 2017-08-28 A |  |  | 张籽娟 |
| 99 | 卡券设置 服务类型可多选、卡券分类可以修改 | 2d | 2017-08-29 | 2017-08-30 |  |  | 张籽娟 |
| 100 | 会员套餐，卡券售卖价变更成为单张售卖价 | 1d | 2017-08-28 A | 2017-08-28 A |  |  | 张籽娟 |
| 101 | 添加会员时。存在错别字，，为 | 1d | 2017-08-28 A | 2017-08-28 A |  |  | 张籽娟 |
| 102 | 消费结账 默认已开票 | 2d | 2017-08-28 | 2017-08-29 |  |  | 陈小桂 |
| 112 | **商城需求调研** | 5d | 2017-09-06 | 2017-09-12 |  |  |  |
| 113 | 客服委员会需求调研 | 3d | 2017-09-06 | 2017-09-08 | 114 | start no earlier than 2017-09-06 | 付陈林; 文栎波; 杨建 |
| 114 | 用品需求调研 | 2d | 2017-09-11 | 2017-09-12 |  |  | 付陈林; 杨建; 文栎波 |
| 115 | **商城设计** | 6d | 2017-09-14 | 2017-09-21 |  |  |  |
| 116 | 前端UI设计 | 3d | 2017-09-14 | 2017-09-18 |  |  | 杨建 |
| 117 | 后台原型设计 | 3d | 2017-09-14 | 2017-09-18 |  |  | 付陈林 |
| 118 | 业务表结构设计 | 2d | 2017-09-19 | 2017-09-20 |  |  | 付陈林 |
| 119 | 前端设计讨论确定 | 1d | 2017-09-18 | 2017-09-18 |  |  | 杨建 |
| 120 | 后台原型设计讨论确定 | 1d | 2017-09-21 | 2017-09-21 |  |  | 付陈林 |
| 121 | 业务表结构讨论确定 | 1d | 2017-09-21 | 2017-09-21 |  |  | 付陈林 |
| 122 | 商城开发 | 1d? | 2017-09-06 | 2017-09-06 |  |  |  |
| 123 | 商城测试上线 | 1d? | 2017-09-06 | 2017-09-06 |  |  |  |
| 124 | **太平洋保险接口对接** | 25d | 2017-08-31 A | 2017-10-04 |  |  |  |
| 125 | 接口加密加签 | 1d | 2017-08-31 A | 2017-08-31 A |  |  | 王大鹏 |
| 126 | 车型查询 | 1d | 2017-09-01 A | 2017-09-01 A |  |  | 王大鹏 |
| 127 | 行业车型查询 | 1d | 2017-09-04 A | 2017-09-04 A |  |  | 王大鹏 |
| 128 | 保费计算 | 1.5d | 2017-09-07 | 2017-09-08 |  |  | 王大鹏 |
| 129 | 预核保提交 | 1.5d | 2017-09-08 | 2017-09-11 |  |  | 王大鹏 |
| 130 | 核保提交 | 1d | 2017-09-12 | 2017-09-12 |  |  | 王大鹏 |
| 131 | 提交两核 | 1.5d | 2017-09-13 | 2017-09-14 |  |  | 王大鹏 |
| 132 | 支付申请 | 2d | 2017-09-14 | 2017-09-15 |  |  | 王大鹏 |
| 133 | 支付申请作废 | 1d | 2017-09-19 | 2017-09-19 |  |  | 王大鹏 |
| 134 | 保单误核删除 | 1d | 2017-09-20 | 2017-09-20 |  |  | 王大鹏 |
| 135 | 手工签发 | 1d | 2017-09-21 | 2017-09-21 |  |  | 王大鹏 |
| 136 | 北京电子保单补发 | 1d | 2017-09-22 | 2017-09-22 |  |  | 王大鹏 |
| 137 | 北京身份证采集 | 1d | 2017-09-25 | 2017-09-25 |  |  | 王大鹏 |
| 138 | 北京身份采集验证码更新 | 1d | 2017-09-26 | 2017-09-26 |  |  | 王大鹏 |
| 139 | 北京新车备案 | 1d | 2017-09-27 | 2017-09-27 |  |  | 王大鹏 |
| 140 | 北京电子投保单短信确认接口 | 1d | 2017-09-28 | 2017-09-28 |  |  | 王大鹏 |
| 141 | 人工核保结果回调接口（合作伙伴实现） | 1d | 2017-09-29 | 2017-09-29 |  |  | 王大鹏 |
| 142 | 保单生效回调接口（合作伙伴实现） | 1d | 2017-10-03 | 2017-10-03 |  |  | 王大鹏 |

Removed: 18 全员开通会员; 50 会员储值列表

Changed:

| ID | Task | Start | Finish | Duration | Complete | Total float | Other |
| --- | --- | --- | --- | --- | --- | --- | --- |
| 1 | **会员系统开发** |  | 2017-09-01 → 2017-09-11 (+10d) | 14d → 19.5d | 43% → 48% |  |  |
| 2 | **业务功能开发** |  | 2017-08-31 → 2017-09-11 (+11d) | 13d → 19.5d | 33% → 42% |  |  |
| 8 | **结算增加规则** |  | 2017-08-24 → 2017-08-25 A (+1d) | 3d → 4d | 33% → 100% |  |  |
| 9 | 结算完后会员升级(生成会员级别调整记录) |  | 2017-08-23 A |  | 50% → 100% |  |  |
| 10 | **根据会员规则结算** | 2017-08-24 A | 2017-08-24 → 2017-08-25 A (+1d) | 1d → 2d | 0% → 100% |  |  |
| 14 | **购买规则处理** | 2017-08-24 A | 2017-08-24 A |  | 0% → 100% | 0d → none |  |
| 15 | 储值完后会员升级(生成会员级别调整记录) | 2017-08-24 A | 2017-08-24 A |  | 0% → 100% |  |  |
| 16 | 储值、卡券、卡包 界面整合 | 2017-08-25 → 2017-08-28 (+3d) | 2017-08-31 → 2017-09-01 (+1d) |  |  |  |  |
| 17 | 客户微信端--储值明细改造 | 2017-08-23 → 2017-08-30 A (+7d) | 2017-08-23 → 2017-08-30 A (+7d) |  | 0% → 100% |  |  |
| 18 | 客户微信端--积分明细改造 | 2017-08-24 → 2017-08-31 A (+7d) | 2017-08-24 → 2017-08-31 A (+7d) |  | 0% → 100% |  |  |
| 19 | 卡券界面改造 | 2017-08-23 → 2017-09-01 (+9d) | 2017-08-24 → 2017-09-01 (+8d) | 2d → 1d |  |  |  |
| 20 | 后台添加临时会员 | 2017-08-15 A | 2017-08-15 A |  | 0% → 100% |  |  |
| 43 | **规则定时任务** |  | 2017-09-01 → 2017-09-06 (+5d) | 14d → 17d | 53% → 57% |  |  |
| 56 | 会员保险到期提醒 | 2017-08-21 A | 2017-08-21 A |  | 0% → 100% |  |  |
| 57 | 驾照年审到期提醒 | 2017-08-22 A | 2017-08-22 A |  | 0% → 100% |  |  |
| 62 | **商周数据导入** |  |  |  | 25% → 63% |  |  |
| 64 | 陕西瑞迪商周数据初始化导出 | 2017-08-16 A | 2017-08-16 A |  | 0% → 100% |  |  |
| 65 | 陕西博宝商周数据初始化导出 | 2017-08-16 A | 2017-08-16 A |  | 0% → 100% |  |  |
| 66 | 陕西瑞捷商周数据初始化导出 | 2017-08-16 A | 2017-08-16 A |  | 0% → 100% |  |  |
| 72 | 事业部客服经理-会员管理报表 |  |  |  |  |  | was named 会员信息列表 |
| 73 | 经销店客服-会员权益列表 |  |  |  |  |  | was named 会员积分列表 |
| 74 | 经销店客服-会员权益统计 |  |  |  |  |  | was named 会员卡券列表 |
| 75 | **云之家轻应用开发** |  | 2017-08-29 → 2017-09-06 (+8d) | 17d → 23d | 50% → 70% |  |  |
| 77 | **开票信息应用开发** |  | 2017-08-23 A |  | 67% → 100% | 0d → none |  |
| 80 | 界面接口调试 | 2017-08-22 A | 2017-08-22 A |  | 0% → 100% |  |  |
| 81 | 测试上线 | 2017-08-23 A | 2017-08-23 A |  | 0% → 100% |  |  |
| 82 | **电子名片应用开发** | 2017-08-15 A | 2017-08-29 → 2017-09-06 (+8d) | 11d → 17d | 0% → 43% |  |  |
| 83 | 接口开发 | 2017-08-15 A | 2017-08-16 A |  | 0% → 100% |  |  |
| 84 | 界面开发 | 2017-08-25 A | 2017-08-25 A |  | 0% → 100% |  |  |
| 88 | 测试上线 | 2017-08-29 → 2017-09-06 (+8d) | 2017-08-29 → 2017-09-06 (+8d) |  |  |  | resources 文栎波 → 文栎波; 郭婷; 李凯 |
| 91 | **bug修改** |  | 2017-08-21 A → 2017-08-30 (+9d) | 5d → 12d | 100% → 46% | none → 0d |  |
| 111 | **商城系统开发** | 2017-08-16 → 2017-09-06 (+21d) | 2017-08-16 → 2017-09-26 (+41d) | 1d? → 15d |  |  | was named 微信商城开发 |

## Version 5 (saved 2017-09-11)

Note of the change: 开发计划

Last finish stays 2017-10-04. Complete tasks 46 → 58.

Added:

| ID | Task | Duration | Start | Finish | Resources |
| --- | --- | --- | --- | --- | --- |
| 22 | 费用类型可多选处理 | 1d | 2017-08-15 | 2017-08-15 | 陈小桂 |
| 76 | **运通汇报表** | 1d | 2017-09-11 | 2017-09-11 |  |
| 77 | **财务统计报表** | 1d | 2017-09-11 | 2017-09-11 |  |
| 78 | 会员权益列表 | 3d | 2017-09-11 | 2017-09-13 | 张籽娟 |
| 79 | 会员权益统计 | 2d | 2017-09-14 | 2017-09-15 | 张籽娟 |
| 80 | 运通汇会员管理模块报表-财务统计 | 2d | 2017-09-11 | 2017-09-12 | 梁廷森 |
| 109 | (微信申请临时会员)客户在注册运通汇的时候 客户姓名和出生年月日都要输入两次 如果先输入了姓名和生日 再去绑定车辆的话 出来的界面就又要输入生日姓名，能否操作简化 | 1d | 2017-08-15 A | 2017-08-15 A | 梁廷森 |
| 110 | （供应商扫码记录）第三方供应商扫码记录，是否可以在后面显示操作人；不然无法统计操作数量，扫码人 | 1d | 2017-08-15 | 2017-08-15 | 李凯 |
| 111 | (会员消息模板)给客户发送提醒短信，设置好了，但是没有发送出去； | 1d | 2017-08-15 | 2017-08-15 | 王大鹏 |
| 112 | (卡券设置)由于车主和会员注册人（用车人）有可能不是同一人，手机号也不一致，选择会员界面需要添加底盘号或车主姓名，以便快速准确找到客户 | 1d | 2017-08-15 | 2017-08-15 | 陈小桂 |
| 113 | (会员管理条件参数)需要添加两个条件参数，“近一年消费金额”、“累计消费金额”、“服务类别”——（保养、维修、事故理赔、索赔、首保、召回、其他） | 1d | 2017-08-15 | 2017-08-15 | 梁廷森 |
| 114 | 1、运通生活：活动管理状态，招募中和活动中所显示的活动不全2、活动上传时的限制人数，只能填写人数和选择不限制，不能空白。3、活动费用，如果是0元，选择免费，不允许写0元，客户支付不了。 | 1d | 2017-08-15 | 2017-08-15 | 梁廷森 |

Changed:

| ID | Task | Start | Finish | Duration | Complete | Other |
| --- | --- | --- | --- | --- | --- | --- |
| 1 | **会员系统开发** |  |  |  | 48% → 61% |  |
| 2 | **业务功能开发** |  |  |  | 42% → 63% |  |
| 21 | 服务类型可多选处理 | 2017-09-04 A | 2017-09-05 A |  | 0% → 100% | was named 服务类型、费用类型可多选处理 |
| 23 | 新增活动方案(基础数据) | 2017-09-05 A | 2017-09-05 A |  | 0% → 100% |  |
| 24 | 卡券设置调整 | 2017-09-05 A | 2017-09-05 A |  | 0% → 100% |  |
| 26 | 会员套餐设置调整 | 2017-09-06 A | 2017-09-06 A |  | 0% → 100% |  |
| 28 | 增加是否同时消费处理 | 2017-09-06 A | 2017-09-06 A |  | 0% → 100% |  |
| 29 | 卡券购买时---增加积分抵扣功能 | 2017-09-07 A | 2017-09-07 A |  | 0% → 100% |  |
| 33 | 卡券销售记录调整 | 2017-09-08 A | 2017-09-08 A |  | 0% → 100% |  |
| 34 | 卡券发放记录调整 | 2017-09-08 A | 2017-09-08 A |  | 0% → 100% |  |
| 35 | 卡券使用记录调整 | 2017-09-11 A | 2017-09-11 A |  | 0% → 100% |  |
| 36 | 卡包销售记录调整 | 2017-09-11 A | 2017-09-11 A |  | 0% → 100% |  |
| 71 | **业务报表开发** |  | 2017-08-16 → 2017-09-15 (+30d) | 1d → 23d |  |  |
| 97 | **bug修改** |  |  |  | 46% → 47% |  |
| 108 | 消费结账 默认已开票 | 2017-08-28 A | 2017-08-29 A |  | 0% → 100% |  |

## Version 6 (saved 2017-09-22)

Note of the change: 增加文档

Last finish 2017-10-04 → 2017-10-10 (+6d). Complete tasks 58 → 114.

Added:

| ID | Task | Duration | Start | Finish | Resources |
| --- | --- | --- | --- | --- | --- |
| 16 | **操作界面改造** | 27d | 2017-08-15 A | 2017-09-20 A |  |
| 42 | 确定菜单名称 | 1d | 2017-09-14 A | 2017-09-14 A | 陈小桂 |
| 43 | 界面再细化一下 | 1d | 2017-09-14 A | 2017-09-14 A | 陈小桂; 郭婷 |
| 44 | 界面测试 | 1d | 2017-09-14 A | 2017-09-14 A | 陈小桂 |
| 45 | 整合购买撤销 | 1d | 2017-09-15 A | 2017-09-15 A | 陈小桂 |
| 46 | 调整打印 | 1d | 2017-09-15 A | 2017-09-15 A | 陈小桂 |
| 47 | 卡券购买增加搜索功能 | 1d | 2017-09-25 | 2017-09-25 | 陈小桂 |
| 49 | 关闭自动结算 | 1d | 2017-09-18 A | 2017-09-18 A | 陈小桂 |
| 50 | 卡券基础信息调整-增加服用类型多选功能 | 0.5d | 2017-09-19 A | 2017-09-19 A | 陈小桂 |
| 51 | 会员储值设置-费用类型多选 | 0.5d | 2017-09-19 A | 2017-09-19 A | 陈小桂 |
| 52 | 结算是对费用类型多选进行处理 | 1d | 2017-09-20 A | 2017-09-20 A | 陈小桂 |
| 55 | 对字段进行增加 | 2d | 2017-09-18 | 2017-09-19 | 梁廷森 |
| 56 | 会员详情---基础信息 | 0.5d | 2017-09-20 | 2017-09-20 | 梁廷森 |
| 57 | 会员详情--车辆信息 | 0.5d | 2017-09-20 | 2017-09-20 | 梁廷森 |
| 58 | 会员详情---积分信息 | 1d | 2017-09-05 A | 2017-09-05 A | 张籽娟 |
| 59 | 会员详情--卡券信息 | 1d | 2017-09-05 A | 2017-09-05 A | 张籽娟 |
| 60 | 会员详情--储值信息 | 0.5d | 2017-09-19 A | 2017-09-19 A | 张籽娟 |
| 61 | 会员详情--购买记录 | 1d | 2017-09-05 A | 2017-09-05 A | 张籽娟 |
| 62 | 会员详情--高级查询 | 2d | 2017-10-09 | 2017-10-10 | 张籽娟 |
| 63 | **运通汇个人中心调整** | 2d | 2017-09-21 | 2017-09-22 |  |
| 64 | 个人中心接口的开发 | 0.5d | 2017-09-21 | 2017-09-21 | 梁廷森 |
| 65 | 个人中心界面对接 | 0.5d | 2017-09-21 | 2017-09-21 | 梁廷森 |
| 66 | 调试测试 | 1d | 2017-09-22 | 2017-09-22 | 梁廷森 |
| 67 | **消费结账调整** | 5d | 2017-09-21 | 2017-09-27 |  |
| 68 | 增加服务顾问添加消费结账 | 3d | 2017-09-21 | 2017-09-25 | 陈小桂 |
| 69 | 财务确认消费结账 | 1d | 2017-09-26 | 2017-09-26 | 陈小桂 |
| 70 | 财务撤回操作 | 1d | 2017-09-27 | 2017-09-27 | 陈小桂 |
| 71 | 调整结算打印功能 | 1d | 2017-09-27 | 2017-09-27 | 陈小桂 |
| 123 | 图片切图接口 | 0.5d | 2017-09-15 A | 2017-09-15 A | 李凯 |
| 124 | 切图测试 | 0.5d | 2017-09-15 A | 2017-09-15 A | 郭婷; 李凯 |
| 125 | 切图及电子名片调整后上线 | 1d | 2017-09-18 A | 2017-09-18 A | 郭婷; 李凯; 文栎波 |
| 126 | 通知行政（包括使用方法） | 1d | 2017-09-19 | 2017-09-19 | 付陈林; 文栎波 |
| 147 | 卡券购买 餐券和洗浴券消积分后，增加此单据打印 | 0.5d | 2017-09-20 | 2017-09-20 | 陈小桂 |
| 188 | **校园招聘** | 1d | 2017-09-15 A | 2017-09-15 |  |
| 189 | UI设计 | 2d | 2017-09-15 A | 2017-09-18 A | 买晨雨; 杨建 |
| 190 | 前两个界面前端设计 | 2d | 2017-09-15 A | 2017-09-18 A | 文栎波 |
| 191 | 后三界面前端设计 | 1.5d | 2017-09-19 A | 2017-09-20 A | 文栎波 |
| 192 | 校园招聘前端整体设计 | 0.5d | 2017-09-20 A | 2017-09-20 A | 郭婷; 文栎波 |
| 193 | 整体流程测试 | 1d | 2017-09-21 A | 2017-09-21 A | 郭婷 |

Changed:

| ID | Task | Start | Finish | Duration | Complete | Total float | Other |
| --- | --- | --- | --- | --- | --- | --- | --- |
| 1 | **会员系统开发** |  | 2017-09-11 → 2017-10-10 (+29d) | 19.5d → 41d | 61% → 79% |  |  |
| 2 | **业务功能开发** |  | 2017-09-11 → 2017-10-10 (+29d) | 19.5d → 41d | 63% → 84% |  |  |
| 19 | 卡券界面改造 | 2017-09-01 → 2017-09-18 A (+17d) | 2017-09-01 → 2017-09-20 A (+19d) | 1d → 3d | 0% → 100% |  |  |
| 24 | 会员储值设置调整 | 2017-09-06 A | 2017-09-06 A |  | 0% → 100% |  |  |
| 26 | 新增会员及临时会员的时候增加车主姓名及手机号字段 | 2017-09-07 A | 2017-09-07 A |  | 0% → 100% |  |  |
| 29 | 会员业务查看调整 | 2017-09-07 A | 2017-09-07 A |  | 0% → 100% |  |  |
| 34 | 会员储值记录调整 | 2017-09-06 A | 2017-09-06 A |  | 0% → 100% |  |  |
| 35 | 会员购买记录调整 | 2017-09-06 A | 2017-09-06 A |  | 0% → 100% |  |  |
| 36 | 会员储值记录调整 | 2017-09-07 A | 2017-09-07 A |  | 0% → 100% |  |  |
| 37 | 会员消费记录调整 | 2017-09-07 A | 2017-09-07 A |  | 0% → 100% |  |  |
| 38 | 会员扫码记录调整 | 2017-09-08 A | 2017-09-08 A |  | 0% → 100% |  |  |
| 39 | 卡券PC端扫码记录调整 | 2017-09-08 A | 2017-09-08 A |  | 0% → 100% |  |  |
| 40 | 会员冻结记录调整 | 2017-09-11 A | 2017-09-11 A |  | 0% → 100% |  |  |
| 41 | **储值、卡券、卡包 界面整合** |  |  |  | 0% → 83% |  |  |
| 48 | **费用类型可多选处理** | 2017-08-15 → 2017-09-18 A (+34d) | 2017-08-15 → 2017-09-20 A (+36d) | 1d → 3d | 0% → 100% |  |  |
| 53 | **会员模块字段增加** | 2017-09-05 A |  |  | 0% → 47% |  |  |
| 54 | 与文芳确定字段项（微信端、管理后台） | 2017-09-06 → 2017-09-18 A (+12d) | 2017-09-06 → 2017-09-18 A (+12d) |  | 0% → 100% |  | was named 会员业务新增调整 |
| 72 | **规则定时任务** |  | 2017-09-06 → 2017-09-29 (+23d) | 17d → 34d | 57% → 89% |  |  |
| 83 | 会员首保到期提醒 | 2017-08-21 A | 2017-08-21 A |  | 0% → 100% |  |  |
| 84 | 会员保养到期提醒 | 2017-08-21 A | 2017-08-21 A |  | 0% → 100% |  |  |
| 87 | 车辆年检到期提醒 | 2017-08-22 A | 2017-08-22 A |  | 0% → 100% |  |  |
| 88 | 会员购买提醒 | 2017-08-29 → 2017-09-28 (+30d) | 2017-08-30 → 2017-09-28 (+29d) | 2d → 1d |  |  |  |
| 89 | 会员消费结账（问卷调查） | 2017-08-31 → 2017-09-29 (+29d) | 2017-09-01 → 2017-09-29 (+28d) | 2d → 1d |  |  |  |
| 90 | 自定义天数提醒 | 2017-09-05 A | 2017-09-06 A |  | 0% → 100% |  |  |
| 91 | **商周数据导入** |  | 2017-08-16 A |  | 63% → 100% | 0d → none |  |
| 96 | 陕西瑞迪商周数据核实导入 | 2017-08-16 A | 2017-08-16 A |  | 0% → 100% |  |  |
| 97 | 陕西博宝商周数据核实导入 | 2017-08-16 A | 2017-08-16 A |  | 0% → 100% |  |  |
| 98 | 陕西瑞捷商周数据核实导入 | 2017-08-16 A | 2017-08-16 A |  | 0% → 100% |  |  |
| 99 | **业务报表开发** | 2017-08-16 → 2017-09-11 (+26d) | 2017-09-15 → 2017-09-29 (+14d) | 23d → 15d |  |  |  |
| 100 | **运通汇系统客服业务报表-经销店** | 2017-08-16 → 2017-09-15 (+30d) | 2017-08-16 → 2017-09-29 (+44d) | 1d → 11d |  |  |  |
| 101 | 事业部客服经理-会员管理报表 | 2017-08-16 → 2017-09-28 (+43d) | 2017-08-16 → 2017-09-29 (+44d) | 1d? → 2d |  |  | resources none → 张籽娟 |
| 102 | 经销店客服-会员权益列表 | 2017-08-16 → 2017-09-15 (+30d) | 2017-08-16 → 2017-09-18 (+33d) | 1d? → 2d |  |  | resources none → 张籽娟 |
| 103 | 经销店客服-会员权益统计 | 2017-08-16 → 2017-09-25 (+40d) | 2017-08-16 → 2017-09-27 (+42d) | 1d? → 3d |  |  | resources none → 张籽娟 |
| 107 | 会员权益统计 | 2017-09-14 → 2017-09-20 (+6d) | 2017-09-15 → 2017-09-22 (+7d) | 2d → 3d |  |  |  |
| 109 | **云之家轻应用开发** |  | 2017-09-06 → 2017-09-19 (+13d) | 23d → 32d | 70% → 87% |  |  |
| 116 | **电子名片应用开发** |  | 2017-09-06 → 2017-09-19 (+13d) | 17d → 26d | 43% → 90% |  |  |
| 119 | 界面接口调试 | 2017-08-28 A | 2017-08-28 A |  | 0% → 100% |  |  |
| 120 | 增加用户新增功能 | 2017-09-04 A | 2017-09-04 A |  | 0% → 100% |  |  |
| 121 | 增加审批处理 | 2017-09-05 A | 2017-09-05 A |  | 0% → 100% |  |  |
| 122 | 测试上线 | 2017-09-06 A | 2017-09-06 A |  | 0% → 100% |  |  |
| 129 | **bug修改** |  | 2017-08-30 → 2017-09-22 (+23d) | 12d → 29d | 47% → 72% |  |  |
| 133 | 服务类型关闭 | 2017-08-30 A | 2017-08-30 A |  | 0% → 100% |  |  |
| 134 | 条件参数，本次实付工时费,本次实付材料费、本次实付金额 | 2017-08-29 A | 2017-08-29 A |  | 0% → 100% |  |  |
| 135 | 积分调整类型， 增加一个调整金额。 | 2017-08-29 A | 2017-08-29 A |  | 0% → 100% |  |  |
| 142 | （供应商扫码记录）第三方供应商扫码记录，是否可以在后面显示操作人；不然无法统计操作数量，扫码人 | 2017-08-15 → 2017-09-15 (+31d) | 2017-08-15 → 2017-09-15 (+31d) |  |  |  |  |
| 143 | (会员消息模板)给客户发送提醒短信，设置好了，但是没有发送出去； | 2017-08-15 A | 2017-08-15 A |  | 0% → 100% |  |  |
| 145 | (会员管理条件参数)需要添加两个条件参数，“近一年消费金额”、“累计消费金额”、“服务类别”——（保养、维修、事故理赔、索赔、首保、召回、其他） | 2017-08-15 A | 2017-08-15 A |  | 0% → 100% |  | resources 梁廷森 → 付陈林 |
| 146 | 1、运通生活：活动管理状态，招募中和活动中所显示的活动不全2、活动上传时的限制人数，只能填写人数和选择不限制，不能空白。3、活动费用，如果是0元，选择免费，不允许写0元，客户支付不了。 | 2017-08-15 → 2017-09-22 (+38d) | 2017-08-15 → 2017-09-22 (+38d) |  |  |  |  |
| 156 | **商城系统开发** | 2017-09-06 A |  |  | 0% → 36% |  |  |
| 157 | **商城需求调研** | 2017-09-06 A | 2017-09-12 A |  | 0% → 100% |  |  |
| 158 | 客服委员会需求调研 | 2017-09-06 A | 2017-09-08 A |  | 0% → 100% |  |  |
| 159 | 用品需求调研 | 2017-09-11 A | 2017-09-12 A |  | 0% → 100% |  |  |
| 160 | **商城设计** | 2017-09-14 A |  |  | 0% → 14% |  |  |
| 162 | 后台原型设计 | 2017-09-14 A |  |  | 0% → 50% |  |  |
| 169 | **太平洋保险接口对接** |  |  |  | 15% → 80% |  |  |
| 173 | 保费计算 | 2017-09-07 A | 2017-09-08 A |  | 0% → 100% |  |  |
| 174 | 预核保提交 | 2017-09-08 A | 2017-09-11 A |  | 0% → 100% |  |  |
| 175 | 核保提交 | 2017-09-12 A | 2017-09-12 A |  | 0% → 100% |  |  |
| 176 | 提交两核 | 2017-09-13 A | 2017-09-14 A |  | 0% → 100% |  |  |
| 177 | 支付申请 | 2017-09-14 A | 2017-09-15 A |  | 0% → 100% |  |  |
| 178 | 支付申请作废 | 2017-09-19 A |  |  | 0% → 75% |  |  |
| 179 | 保单误核删除 | 2017-09-20 A |  |  | 0% → 75% |  |  |
| 180 | 手工签发 | 2017-09-21 A |  |  | 0% → 75% |  |  |
| 181 | 北京电子保单补发 | 2017-09-22 A |  |  | 0% → 75% |  |  |
| 182 | 北京身份证采集 | 2017-09-25 A |  |  | 0% → 75% |  |  |
| 183 | 北京身份采集验证码更新 | 2017-09-26 A |  |  | 0% → 75% |  |  |
| 184 | 北京新车备案 | 2017-09-27 A |  |  | 0% → 75% |  |  |
| 185 | 北京电子投保单短信确认接口 | 2017-09-28 A |  |  | 0% → 75% |  |  |

## Version 7 (saved 2017-12-06)

Note of the change: 提交技术文档

Last finish 2017-10-10 → 2017-11-09 (+30d). Complete tasks 114 → 156.

Added:

| ID | Task | Duration | Start | Finish | Resources |
| --- | --- | --- | --- | --- | --- |
| 48 | 卡券购买增加活动方案过滤 | 1d | 2017-10-09 A | 2017-10-09 A | 陈小桂 |
| 49 | 储值购买增加活动过滤 | 1d | 2017-10-10 A | 2017-10-10 A | 陈小桂 |
| 71 | 消费结账，在削减卡券时，需要能看到该卡券对应的活动时那个，便于收银削减，店内客户会对削减那个卡券有要求（统一卡券名称，不同活动）。 | 1d | 2017-09-26 A | 2017-09-26 A | 陈小桂 |
| 72 | 消费结账时，要显示卡卷的剩余可用次数。 | 1d | 2017-09-26 A | 2017-09-26 A | 陈小桂 |
| 73 | 消费结账时，抵用金额输入框太短，如果输入4位数，将显示不全，而且不能用鼠标拉选里面的金额。 | 1d | 2017-09-26 A | 2017-09-26 A | 陈小桂 |
| 108 | 会员信息分析-经销店客服 | 2d | 2017-09-29 A | 2017-09-30 A | 张籽娟 |
| 110 | 运通汇会员管理模块报表-集团及经销店共用 | 4d | 2017-10-12 A | 2017-10-17 A | 张籽娟 |
| 154 | 在设置套餐时无法选择到正确的卡券，能否改为，在设置套餐时，选择活动后，就只能选择到该活动下的卡券 | 1d | 2017-09-27 A | 2017-09-27 A | 李凯 |
| 155 | 套餐审批时，财务审批人员，无法看到套餐内卡券的具体信息，无法确定卡券是否设置准确，能否改为，在套餐审批时，可以打开套餐内卡券详情卡看。 | 1d | 2017-09-27 A | 2017-09-27 A | 李凯 |
| 156 | 卡券附件挂在，修改到活动里，只作为一次附件上传，并与卡券，套餐进行关联。 | 1d | 2017-09-28 A | 2017-09-28 A | 陈小桂 |
| 157 | 短信发送记录能否做个分页显示？目前这个一次显示全部信息，直接会让浏览器卡死。 | 1d | 2017-09-28 A | 2017-09-28 A | 李凯 |
| 158 | 卡券、储值、会员套餐统一修改方案（与小桂进行沟通后在进行） | 1d | 2017-09-29 A | 2017-09-29 A | 李凯 |
| 159 | 会员业务里，服务顾问，销售顾问需要查看客户权益，需要精简服务顾问和销售顾问查看到的内容，改为只可以查询查看单条客户记录，不能全部查看。 | 1d | 2017-09-29 A | 2017-09-29 A | 陈小桂 |
| 160 | 已经切换新会员系统店，客户会员卡不再显示商周会员卡信息，只显示新会员系统会员卡。避免客户可以查看到商周会员权益，产生误会。 | 1d | 2017-09-30 A | 2017-09-30 A | 梁廷森 |
| 161 | 系统内，所有分页处均添加首页和尾页按钮。 | 1d | 2017-09-30 A | 2017-09-30 A | 李凯 |
| 162 | 微信文章，编辑文章时图片大小，控制在3M左右 | 1d | 2017-08-15 | 2017-08-15 | 梁廷森 |
| 163 | 活动方案审批由店内提报内容，集团事业部、财务部审批流程，审批后，锁死活动方案、活动名称及内容，店内无修改权限 | 1d | 2017-08-15 | 2017-08-15 | 李凯 |
| 164 | 同一个客户手机号24小时内只能提交预约一款试驾车系；即同一个客户一天可以预约试驾多款车，但是同一款车不能让客户重复提交订单。 | 1d | 2017-08-15 | 2017-08-15 | 梁廷森 |
| 165 | 卡券与卡券之间的互斥。储值与储值之间互斥。 | 1d | 2017-08-15 | 2017-08-15 | 张籽娟 |
| 166 | 针对开发常见问题的处理界面 | 1d | 2017-08-15 A | 2017-08-15 A | 梁廷森 |
| 167 | 针对运维问题常见问题处理方式 | 1d? | 2017-08-15 | 2017-08-15 |  |
| 207 | 【微信运营】-图文素材管理的编辑器功能不全，不能调整字体大小，此处编辑器要求：跟微信公众号的编辑器功能一样，而且要好使(优化视频上传) | 1d | 2017-10-09 | 2017-10-09 | 梁廷森 |
| 208 | 图文素材编辑---正文编辑框功能要与微信公众号平台一样，且从第三方平台编辑好的格式能直接复制过来（微信公众号具有此功能） | 1d | 2017-10-10 | 2017-10-10 | 梁廷森 |
| 209 | 图文素材编辑---正文不能上传视频，正文里头一行不要出现封面图片 | 0.5d | 2017-10-10 | 2017-10-10 | 梁廷森 |
| 210 | 图文素材编辑---开通音频功能，可在图文中添加音 | 1d | 2017-10-11 | 2017-10-11 | 梁廷森 |
| 211 | 【微信运营】-自动回复-关键词回复：该功能不好使；此外，关键词需要能够完全匹配、不完全匹配 | 1d | 2017-10-12 | 2017-10-12 | 梁廷森 |
| 212 | 图文素材编辑---开通留言功能，分为所有人员可留言、仅关注后可留言两种，以供粉丝在每一篇图文底部留言 | 1d | 2017-09-15 | 2017-09-15 | 梁廷森 |
| 213 | 图文素材编辑---开通原创声明功能 | 1d | 2017-09-15 | 2017-09-15 | 梁廷森 |
| 214 | 群发图文功能----群发图文功能有关的功能有：图文编辑、留言管理、图文分析 | 1d | 2017-09-15 | 2017-09-15 | 梁廷森 |

Removed: 105 财务统计报表; 178 支付申请作废; 182 北京身份证采集; 183 北京身份采集验证码更新; 184 北京新车备案; 185 北京电子投保单短信确认接口; 186 人工核保结果回调接口（合作伙伴实现）; 187 保单生效回调接口（合作伙伴实现）

Changed:

| ID | Task | Start | Finish | Duration | Complete | Total float | Other |
| --- | --- | --- | --- | --- | --- | --- | --- |
| 1 | **会员系统开发** |  |  |  | 79% → 96% |  |  |
| 2 | **业务功能开发** |  |  |  | 84% → 96% |  |  |
| 41 | **储值、卡券、卡包 界面整合** | 2017-08-28 A |  |  | 83% → 100% |  |  |
| 47 | 卡券购买增加搜索功能 | 2017-09-25 A | 2017-09-25 A |  | 0% → 100% |  |  |
| 55 | **会员模块字段增加** |  |  |  | 47% → 100% |  |  |
| 57 | 对字段进行增加 | 2017-09-18 → 2017-09-26 A (+8d) | 2017-09-19 → 2017-09-26 A (+7d) | 2d → 1d | 0% → 100% |  |  |
| 58 | 会员详情---基础信息 | 2017-09-20 → 2017-09-26 A (+6d) | 2017-09-20 → 2017-09-26 A (+6d) |  | 0% → 100% |  |  |
| 59 | 会员详情--车辆信息 | 2017-09-20 → 2017-09-26 A (+6d) | 2017-09-20 → 2017-09-26 A (+6d) |  | 0% → 100% |  |  |
| 64 | 会员详情--高级查询 | 2017-10-09 A | 2017-10-10 A |  | 0% → 100% |  |  |
| 65 | **运通汇个人中心调整** | 2017-09-21 → 2017-09-27 (+6d) | 2017-09-22 → 2017-09-28 (+6d) |  |  |  |  |
| 66 | 个人中心接口的开发 | 2017-09-21 → 2017-09-27 (+6d) | 2017-09-21 → 2017-09-27 (+6d) |  |  |  |  |
| 67 | 个人中心界面对接 | 2017-09-21 → 2017-09-28 (+7d) | 2017-09-21 → 2017-09-28 (+7d) |  |  |  |  |
| 68 | 调试测试 | 2017-09-22 → 2017-09-28 (+6d) | 2017-09-22 → 2017-09-28 (+6d) |  |  |  |  |
| 69 | **消费结账调整** | 2017-09-21 A | 2017-09-27 A |  | 0% → 100% | 0d → none |  |
| 70 | 增加服务顾问添加消费结账 | 2017-09-21 A | 2017-09-25 A |  | 0% → 100% |  |  |
| 74 | 财务确认消费结账 | 2017-09-26 A | 2017-09-26 A |  | 0% → 100% |  |  |
| 75 | 财务撤回操作 | 2017-09-27 A | 2017-09-27 A |  | 0% → 100% |  |  |
| 76 | 调整结算打印功能 | 2017-09-27 A | 2017-09-27 A |  | 0% → 100% |  |  |
| 77 | **规则定时任务** |  | 2017-09-29 → 2017-09-30 (+1d) |  | 89% → 95% |  |  |
| 93 | 会员购买提醒 | 2017-09-28 → 2017-09-30 A (+2d) | 2017-09-28 → 2017-09-30 A (+2d) |  | 0% → 100% |  | resources 王大鹏; 陈小桂 → 陈小桂 |
| 94 | 会员消费结账（问卷调查） | 2017-09-29 → 2017-09-30 (+1d) | 2017-09-29 → 2017-09-30 (+1d) |  |  |  | resources 王大鹏; 陈小桂 → 陈小桂 |
| 104 | **业务报表开发** | 2017-09-11 A | 2017-09-29 → 2017-10-23 A (+24d) | 15d → 31d | 0% → 100% | 0d → none |  |
| 105 | **运通汇系统客服业务报表-经销店** | 2017-09-15 → 2017-09-25 A (+10d) | 2017-09-29 → 2017-10-17 A (+18d) | 11d → 17d | 0% → 100% | 0d → none |  |
| 106 | 会员积分分析-经销店客服 | 2017-09-28 → 2017-09-25 A (-3d) | 2017-09-29 → 2017-09-26 A (-3d) |  | 0% → 100% |  | was named 事业部客服经理-会员管理报表 |
| 107 | 会员消费记录-经销店客服 | 2017-09-25 → 2017-09-27 A (+2d) | 2017-09-27 → 2017-09-28 A (+1d) | 3d → 2d | 0% → 100% |  | was named 经销店客服-会员权益统计 |
| 109 | 会员售卖记录-经销店客服 | 2017-09-15 → 2017-10-09 A (+24d) | 2017-09-18 → 2017-10-11 A (+23d) | 2d → 3d | 0% → 100% |  | was named 经销店客服-会员权益列表 |
| 111 | **运通汇报表-财务统计报表** | 2017-09-11 A |  |  | 0% → 100% |  | was named 运通汇报表 |
| 112 | 会员权益列表 | 2017-09-11 → 2017-10-17 A (+36d) | 2017-09-13 → 2017-10-23 A (+40d) | 3d → 5d | 0% → 100% |  |  |
| 113 | 会员权益统计 | 2017-09-20 → 2017-09-11 A (-9d) | 2017-09-22 → 2017-09-13 A (-9d) |  | 0% → 100% |  |  |
| 114 | 运通汇会员管理模块报表-财务统计 | 2017-09-11 A | 2017-09-12 A |  | 0% → 100% |  |  |
| 115 | **云之家轻应用开发** |  | 2017-09-19 A |  | 87% → 100% | 0d → none |  |
| 122 | **电子名片应用开发** |  | 2017-09-19 A |  | 90% → 100% | 0d → none |  |
| 132 | 通知行政（包括使用方法） | 2017-09-19 A | 2017-09-19 A |  | 0% → 100% |  |  |
| 133 | 审批消息列表展示 | 2017-08-07 A | 2017-08-07 A | 1d? → 1d | 0% → 100% |  |  |
| 134 | 云之家审批代办消息提醒 | 2017-08-07 A | 2017-08-07 A | 1d? → 1d | 0% → 100% |  |  |
| 135 | **bug修改** |  | 2017-09-22 → 2017-09-30 (+8d) | 29d → 34d | 72% → 82% |  |  |
| 143 | 卡券设置 服务类型可多选、卡券分类可以修改 | 2017-08-29 A | 2017-08-30 A |  | 0% → 100% |  |  |
| 148 | （供应商扫码记录）第三方供应商扫码记录，是否可以在后面显示操作人；不然无法统计操作数量，扫码人 | 2017-09-15 → 2017-09-25 A (+10d) | 2017-09-15 → 2017-09-25 A (+10d) |  | 0% → 100% |  |  |
| 150 | (卡券设置)由于车主和会员注册人（用车人）有可能不是同一人，手机号也不一致，选择会员界面需要添加底盘号或车主姓名，以便快速准确找到客户 | 2017-08-15 → 2017-09-25 A (+41d) | 2017-08-15 → 2017-09-25 A (+41d) |  | 0% → 100% |  |  |
| 152 | 1、运通生活：活动管理状态，招募中和活动中所显示的活动不全2、活动上传时的限制人数，只能填写人数和选择不限制，不能空白。3、活动费用，如果是0元，选择免费，不允许写0元，客户支付不了。 | 2017-09-22 → 2017-09-30 (+8d) | 2017-09-22 → 2017-09-30 (+8d) |  |  |  |  |
| 153 | 卡券购买 餐券和洗浴券消积分后，增加此单据打印 | 2017-09-20 → 2017-09-26 A (+6d) | 2017-09-20 → 2017-09-26 A (+6d) |  | 0% → 100% |  | resources 陈小桂 → 李凯 |
| 168 | **高可用系统框架** |  | 2017-08-23 A |  | 50% → 100% |  |  |
| 169 | **方案整理** |  | 2017-08-23 A |  | 60% → 100% |  |  |
| 171 | 方案讨论 | 2017-08-21 A | 2017-08-21 A |  | 0% → 100% |  |  |
| 172 | 方案确认 | 2017-08-23 A | 2017-08-23 A |  | 0% → 100% |  |  |
| 173 | 方案实施 | 2017-08-14 A | 2017-08-14 A | 1d? → 1d | 0% → 100% |  |  |
| 189 | **太平洋保险接口对接** |  |  |  | 80% → 25% |  |  |
| 198 | 精准报价PC端开发、报价api(多家保险公司)、报价api(一家保险公司) | 2017-09-20 A → 2017-09-18 A (-2d) | 2017-09-20 → 2017-09-29 (+9d) | 1d → 10d | 75% → 8% |  | was named 保单误核删除 |
| 199 | 提交投保PC端开发、核保api(多家保险公司)、核保api(一家保险公司)、车辆出险信息api、核保结果回调api | 2017-09-21 A → 2017-09-30 A (+9d) | 2017-09-21 → 2017-10-19 (+28d) | 1d → 15d | 75% → 5% |  | was named 手工签发 |
| 200 | 支付PC端开发、支付申请api、手工签发api、北京电子保单补发api、保单生效回调api、北京电子投保单短信确认接口api | 2017-09-22 A → 2017-10-20 A (+28d) | 2017-09-22 → 2017-11-09 (+48d) | 1d → 15d | 75% → 5% |  | was named 北京电子保单补发 |
| 201 | **校园招聘** |  |  |  | 100% → 48% |  |  |
